# Projeto ContabilTarefa

Schedule from GanttProject, 2026-02-02 to 2026-05-21.
ITBX Tech
Holidays every year on 01-01, 04-21, 05-01, 09-07, 10-12, 11-02, 11-15, 12-25

## Calendars

- Project calendar: Mon-Fri working; Sat-Sun off. Exceptions (off unless hours are given): 2026-02-16 (Carnival Monday), 2026-02-17 (Carnival Tuesday), 2026-02-18 (Ash Wednesday), 2026-04-03 (Good Friday).

## Resources

| Resource |
| --- |
| Gustavo |
| Thiago |
| Mariluce |
| Juliana |

## Schedule

| ID | WBS | Task | Duration | Start | Finish | Predecessors | Complete | Resources |
| --- | --- | --- | --- | --- | --- | --- | --- | --- |
| 1 | 1 | **Design** | 40d | 2026-02-02 | 2026-04-01 |  | 90% |  |
| 2 | 1.1 | Documentação de Requisitos | 15d | 2026-02-02 | 2026-02-25 |  | 100% | Gustavo |
| 3 | 1.2 | Documentação de Processos | 30d | 2026-02-02 | 2026-03-18 |  | 100% | Gustavo |
| 4 | 1.3 | **Modelo de Dados** | 40d | 2026-02-02 | 2026-04-01 |  | 80% | Gustavo; Mariluce |
| 5 | 1.3.1 | ME-R Conceitual | 32d | 2026-02-02 | 2026-03-20 |  | 100% | Gustavo; Mariluce |
| 6 | 1.3.2 | ME-R Físico | 7d | 2026-03-23 | 2026-03-31 | 5 |  | Mariluce |
| 7 | 1.3.3 | Criação do Script da Base de Dados | 1d | 2026-04-01 | 2026-04-01 | 5, 6 |  | Mariluce |
| 8 | 2 | **Build** | 13d | 2026-03-23 | 2026-04-09 |  |  |  |
| 9 | 2.1 | Configuração de ambiente local | 1d | 2026-03-23 | 2026-03-23 |  |  | Thiago |
| 10 | 2.2 | Configuração de ambiente de homologação | 1d | 2026-03-24 | 2026-03-24 |  |  | Thiago |
| 11 | 2.3 | Lógica de acesso | 1d | 2026-03-25 | 2026-03-25 |  |  | Thiago |
| 12 | 2.4 | Tela de login e separação de contas (admin, contabilidade e cliente) | 1d | 2026-03-26 | 2026-03-26 |  |  | Thiago |
| 13 | 2.5 | Lógica de cadastro de usuários | 2d | 2026-03-30 | 2026-03-31 |  |  | Thiago |
| 14 | 2.6 | Armazenamento de cadastros e telas de cadastros | 1d | 2026-04-01 | 2026-04-01 |  |  | Thiago |
| 15 | 2.7 | Tela e lógica de requisição de solicitação de solicitação | 1d | 2026-04-02 | 2026-04-02 |  |  | Thiago |
| 16 | 2.8 | Sistema de notificação | 1d | 2026-04-06 | 2026-04-06 |  |  | Thiago |
| 17 | 2.9 | Tela e lógica de Recebimento de solicitações | 1d | 2026-04-07 | 2026-04-07 |  |  | Thiago |
| 18 | 2.10 | Tela de download e lógica de permissão | 1d | 2026-04-08 | 2026-04-08 |  |  | Thiago |
| 19 | 2.11 | Sistema de cadastro de requisições periódicas | 1d | 2026-04-09 | 2026-04-09 |  |  | Thiago |
| 20 | 3 | **Test** | 30d | 2026-03-23 | 2026-05-06 |  |  |  |
| 21 | 3.1 | Documentação Plano de Testes | 15d | 2026-03-23 | 2026-04-13 |  |  | Juliana |
| 22 | 3.2 | Testes unitários | 10d | 2026-04-14 | 2026-04-28 | 8, 21 |  | Gustavo; Juliana |
| 23 | 3.3 | Testes de Aceitação do Usuário (UAT) | 5d | 2026-04-29 | 2026-05-06 | 22 |  | Gustavo; Juliana |
| 24 | 4 | **Produção** | 11d | 2026-05-07 | 2026-05-21 | 23 |  |  |
| 25 | 4.1 | Ambiente de produção | 1d | 2026-05-07 | 2026-05-07 |  |  | Thiago |
| 26 | 4.2 | Validação em produção | 10d | 2026-05-08 | 2026-05-21 | 25 |  | Gustavo; Thiago; Mariluce; Juliana |
